# Riyadh office layout project

Schedule from MS Project, 2026-10-18 to 2027-01-28, status date 2027-01-28, costs in ⃁, A marks actual dates.

## Calendars

- Riyadh Office Calender: Mon-Thu 08:00-12:00, 13:00-17:00; Fri-Sat off; Sun 08:00-12:00, 13:00-17:00.

## Resources

| Resource | Unit | Rate |
| --- | --- | --- |
| Project Manager |  | 150 |
| Project Planner |  | 100 |
| Archietect |  | 120 |
| Electrical Engineer |  | 100 |
| IT engineer |  | 100 |
| Procurment oficer |  | 80 |
| Site supervisor |  | 70 |
| Carpenters |  | 40 |
| Electricians |  | 40 |
| Network Technician |  | 50 |
| Painter |  | 30 |
| Flooring installers |  | 35 |
| Furniture installers |  | 30 |
| Generaln= worker |  | 20 |
| Partition and ceiling Materials | lot | 45000 |
| Electrical Materials | lot | 20000 |
| Data cabling Materials | lot | 10000 |
| Painting and supplies | lot | 5000 |
| Flooring Materials | lot | 15000 |
| Office furniture | set | 2000 |
| Computer package | set | 3500 |
| aNetwork equipment | lot | 18000 |
| Delivery charges |  |  |
| Software license |  |  |

## Schedule

| ID | WBS | Task | Type | Duration | Start | Finish | Predecessors | Complete | Baseline start | Baseline finish | Baseline duration | Constraint | Resources | Work | Actual work | Cost | Baseline cost | Actual cost |
| --- | --- | --- | --- | --- | --- | --- | --- | --- | --- | --- | --- | --- | --- | --- | --- | --- | --- | --- |
| 1 | 1 | **Initiation** |  | 4d? | 2026-10-18 A | 2026-10-21 A |  | 100% | 2026-10-18 | 2026-10-21 | 4d? |  |  | 42h | 42h | 4,860 | 4,860 | 4,860 |
| 2 | 1.1 | Identify objectives and stakeholders |  | 1d | 2026-10-18 A | 2026-10-18 A |  | 100% | 2026-10-18 | 2026-10-18 | 1d |  | Project Manager [25%]; Project Planner | 10h | 10h | 1,100 | 1,100 | 1,100 |
| 3 | 1.2 | Gather high requirements |  | 2d | 2026-10-19 A | 2026-10-20 A | 2 | 100% | 2026-10-19 | 2026-10-20 | 2d |  | Project Manager [25%]; Project Planner [50%]; Archietect [50%] | 20h | 20h | 2,360 | 2,360 | 2,360 |
| 4 | 1.3 | Prepare project charter |  | 1d? | 2026-10-21 A | 2026-10-21 A | 3 | 100% | 2026-10-21 | 2026-10-21 | 1d? |  | Project Manager [50%]; Project Planner | 12h | 12h | 1,400 | 1,400 | 1,400 |
| 5 | 1.4 | Project charter approved | milestone | 0d | 2026-10-21 A | 2026-10-21 A | 4 | 100% | 2026-10-21 | 2026-10-21 | 0d |  |  |  |  |  |  |  |
| 6 | 2 | **planning** |  | 8d | 2026-10-22 A | 2026-11-02 A |  | 100% | 2026-10-22 | 2026-11-02 | 8d |  |  | 94h | 94h | 9,480 | 9,480 | 9,480 |
| 7 | 2.1 | Define scop and acceptance criteria |  | 2d | 2026-10-22 A | 2026-10-25 A | 5 | 100% | 2026-10-22 | 2026-10-25 | 2d | start no earlier than 2026-10-22 | Project Manager [25%]; Project Planner [50%]; Archietect [50%] | 20h | 20h | 2,360 | 2,360 | 2,360 |
| 8 | 2.2 | Develop detailed WBS |  | 2d | 2026-10-26 A | 2026-10-27 A | 7 | 100% | 2026-10-26 | 2026-10-27 | 2d |  | Project Planner; Archietect [25%] | 20h | 20h | 2,080 | 2,080 | 2,080 |
| 9 | 2.3 | Estimate durations and resource needs |  | 2d | 2026-10-28 A | 2026-10-29 A | 8 | 100% | 2026-10-28 | 2026-10-29 | 2d |  | Project Planner [50%]; Site supervisor [50%] | 16h | 16h | 1,360 | 1,360 | 1,360 |
| 10 | 2.4 | Prepare initial cost estimate |  | 2d | 2026-10-28 A | 2026-10-29 A | 8 | 100% | 2026-10-28 | 2026-10-29 | 2d |  | Project Planner [50%]; Procurment oficer [50%] | 16h | 16h | 1,440 | 1,440 | 1,440 |
| 11 | 2.5 | identify risks and responses |  | 1d | 2026-11-01 A | 2026-11-01 A | 7 | 100% | 2026-11-01 | 2026-11-01 | 1d |  | Project Manager [25%]; Project Planner [50%] | 6h | 6h | 700 | 700 | 700 |
| 12 | 2.6 | Develop procument plan |  | 1d | 2026-11-02 A | 2026-11-02 A | 9, 10 | 100% | 2026-11-02 | 2026-11-02 | 1d |  | Procurment oficer; Project Planner [25%] | 10h | 10h | 840 | 840 | 840 |
| 13 | 2.7 | Develop communication plan |  | 1d | 2026-11-01 A | 2026-11-01 A | 7 | 100% | 2026-11-01 | 2026-11-01 | 1d |  | Project Manager [25%]; Project Planner [50%] | 6h | 6h | 700 | 700 | 700 |
| 14 | 2.8 | planning approved | milestone | 0d | 2026-11-02 A | 2026-11-02 A | 11, 12, 13 | 100% | 2026-11-02 | 2026-11-02 | 0d |  |  |  |  |  |  |  |
| 15 | 3 | **Design and approvals** |  | 14d? | 2026-11-04 A | 2026-11-23 A |  | 100% | 2026-11-04 | 2026-11-22 | 13d? |  |  | 162h | 162h | 17,300 | 15,380 | 17,300 |
| 16 | 3.1 | Site ssurvey and measurments |  | 2d | 2026-11-04 A | 2026-11-05 A | 14FS+1d | 100% | 2026-11-04 | 2026-11-05 | 2d |  | Site supervisor; Archietect [50%] | 24h | 24h | 2,080 | 2,080 | 2,080 |
| 17 | 3.2 | Prepare office layout |  | 5d | 2026-11-08 A | 2026-11-12 A | 16 | 100% | 2026-11-08 | 2026-11-10 | 3d |  | Archietect | 40h | 40h | 4,800 | 2,880 | 4,800 |
| 18 | 3.3 | Review and approve office layout |  | 1d? | 2026-11-15 A | 2026-11-15 A | 17 | 100% | 2026-11-11 | 2026-11-11 | 1d? |  | Project Manager [25%]; Archietect [50%] | 6h | 6h | 780 | 780 | 780 |
| 19 | 3.4 | Prepare electrical and lighting design |  | 2d | 2026-11-16 A | 2026-11-17 A | 18 | 100% | 2026-11-12 | 2026-11-15 | 2d |  | Electrical Engineer | 16h | 16h | 1,600 | 1,600 | 1,600 |
| 20 | 3.5 | prepare IT network design |  | 2d | 2026-11-16 A | 2026-11-17 A | 19SS | 100% | 2026-11-15 | 2026-11-16 | 2d |  | IT engineer | 16h | 16h | 1,600 | 1,600 | 1,600 |
| 21 | 3.6 | Specify furniture and equipment |  | 2d | 2026-11-16 A | 2026-11-17 A | 18 | 100% | 2026-11-12 | 2026-11-15 | 2d |  | Archietect [25%]; Procurment oficer [50%] | 12h | 12h | 1,120 | 1,120 | 1,120 |
| 22 | 3.7 | Prepare fit-out drawings and bill of quantities |  | 2d | 2026-11-18 A | 2026-11-19 A | 21, 19, 20 | 100% | 2026-11-17 | 2026-11-18 | 2d |  | Archietect; Electrical Engineer [25%]; IT engineer [25%] | 24h | 24h | 2,720 | 2,720 | 2,720 |
| 23 | 3.8 | Review design and update cost estimate |  | 2d | 2026-11-22 A | 2026-11-23 A | 22 | 100% | 2026-11-19 | 2026-11-22 | 2d |  | Project Manager [25%]; Project Planner [25%]; Archietect [50%]; Procurment oficer [50%] | 24h | 24h | 2,600 | 2,600 | 2,600 |
| 24 | 3.9 | Design approved | milestone | 0d | 2026-11-23 A | 2026-11-23 A | 23 | 100% | 2026-11-22 | 2026-11-22 | 0d |  |  |  |  |  |  |  |

| ID | WBS | Task | Type | Duration | Start | Finish | Predecessors | Complete | Baseline start | Baseline finish | Baseline duration | Resources | Work | Actual work | Cost | Baseline cost | Actual cost |
| --- | --- | --- | --- | --- | --- | --- | --- | --- | --- | --- | --- | --- | --- | --- | --- | --- | --- |
| 25 | 4 | **Procurement and delivery** |  | 19d? | 2026-11-22 A | 2026-12-16 A |  | 100% | 2026-11-19 | 2026-12-13 | 17d? |  | 84h | 84h | 244,980 | 244,980 | 244,980 |
| 26 | 4.1 | Prepare requests for quotation(RFQs) |  | 2d | 2026-11-22 A | 2026-11-23 A | 22 | 100% | 2026-11-19 | 2026-11-22 | 2d | Procurment oficer [50%]; Project Planner [25%]; Archietect [25%] | 16h | 16h | 1,520 | 1,520 | 1,520 |
| 27 | 4.2 | Request and collect supplier quotations |  | 3d | 2026-11-24 A | 2026-11-26 A | 26, 24 | 100% | 2026-11-23 | 2026-11-25 | 3d | Procurment oficer [50%] | 12h | 12h | 960 | 960 | 960 |
| 28 | 4.3 | Compare technical and commercial offers |  | 2d | 2026-11-29 A | 2026-11-30 A | 27 | 100% | 2026-11-26 | 2026-11-29 | 2d | Procurment oficer [50%]; Archietect [25%]; Electrical Engineer [25%]; IT engineer [25%] | 20h | 20h | 1,920 | 1,920 | 1,920 |
| 29 | 4.4 | Approve supplier and contractor selection |  | 1d? | 2026-12-01 A | 2026-12-01 A | 28 | 100% | 2026-11-30 | 2026-11-30 | 1d? | Project Manager [50%]; Procurment oficer [25%] | 6h | 6h | 760 | 760 | 760 |
| 30 | 4.5 | Finalizing fit-out contractor agreement |  | 1d? | 2026-12-02 A | 2026-12-02 A | 29 | 100% | 2026-12-01 | 2026-12-01 | 1d? | Project Manager [25%]; Procurment oficer [25%] | 4h | 4h | 460 | 460 | 460 |
| 31 | 4.6 | Fil-out contractor appointed | milestone | 0d | 2026-12-02 A | 2026-12-02 A | 30 | 100% | 2026-12-01 | 2026-12-01 | 0d |  |  |  |  |  |  |
| 32 | 4.7 | Order fit-out materials |  | 1d? | 2026-12-02 A | 2026-12-02 A | 29 | 100% | 2026-12-01 | 2026-12-01 | 1d? | Procurment oficer [25%]; Partition and ceiling Materials [1 lot]; Electrical Materials [1 lot]; Data cabling Materials [1 lot]; Painting and supplies [1 lot]; Flooring Materials [1 lot] | 2h | 2h | 95,160 | 95,160 | 95,160 |
| 33 | 4.8 | Order furniture |  | 1d? | 2026-12-02 A | 2026-12-02 A | 29 | 100% | 2026-12-01 | 2026-12-01 | 1d? | Procurment oficer [25%]; Office furniture [20 set] | 2h | 2h | 40,160 | 40,160 | 40,160 |
| 34 | 4.9 | Order computers and Netword equipment |  | 1d? | 2026-12-02 A | 2026-12-02 A | 29 | 100% | 2026-12-01 | 2026-12-01 | 1d? | Procurment oficer [25%]; IT engineer [25%]; Computer package [20 set]; aNetwork equipment [1 lot] | 4h | 4h | 98,360 | 98,360 | 98,360 |
| 35 | 4.10 | Fit-out materials delivery |  | 3d | 2026-12-03 A | 2026-12-07 A | 32 | 100% | 2026-12-02 | 2026-12-06 | 3d |  |  |  | 1,500 | 1,500 | 1,500 |
| 36 | 4.11 | Furniture delivery |  | 9d | 2026-12-03 A | 2026-12-15 A | 33 | 100% | 2026-12-02 | 2026-12-10 | 7d | Delivery charges [0.1%] |  |  | 1,500 | 1,500 | 1,500 |
| 37 | 4.12 | IT equipment delivery |  | 5d | 2026-12-03 A | 2026-12-09 A | 34 | 100% | 2026-12-02 | 2026-12-08 | 5d |  |  |  | 1,000 | 1,000 | 1,000 |
| 38 | 4.13 | Inspect and accept fit-out materials |  | 1d? | 2026-12-08 A | 2026-12-08 A | 35 | 100% | 2026-12-07 | 2026-12-07 | 1d? | Site supervisor [50%]; Archietect [25%]; Electrical Engineer [25%]; Procurment oficer [25%] | 10h | 10h | 880 | 880 | 880 |
| 39 | 4.14 | Inspect and accept furniture and IT equipment |  | 1d? | 2026-12-16 A | 2026-12-16 A | 36, 37 | 100% | 2026-12-13 | 2026-12-13 | 1d? | Procurment oficer [25%]; Archietect [25%]; IT engineer [50%] | 8h | 8h | 800 | 800 | 800 |
| 40 | 4.15 | Procurement and deliveries | milestone | 0d | 2026-12-16 A | 2026-12-16 A | 39, 38 | 100% | 2026-12-13 | 2026-12-13 | 0d |  |  |  |  |  |  |
| 41 | 5 | **Fit-out installation** |  | 25d? | 2026-12-03 A | 2027-01-06 A |  | 100% | 2026-12-02 | 2027-01-05 | 25d? |  | 710h | 710h | 29,540 | 29,540 | 29,540 |
| 42 | 5.1 | Mobilizing contractor |  | 2d | 2026-12-03 A | 2026-12-06 A | 31 | 100% | 2026-12-02 | 2026-12-03 | 2d | Project Manager [25%]; Site supervisor [50%]; Generaln= worker | 28h | 28h | 1,480 | 1,480 | 1,480 |
| 43 | 5.2 | Preparing and protect the site |  | 2d | 2026-12-07 A | 2026-12-08 A | 42 | 100% | 2026-12-06 | 2026-12-07 | 2d | Site supervisor [25%]; Generaln= worker [200%] | 36h | 36h | 920 | 920 | 920 |
| 44 | 5.3 | marking partition and service locations |  | 1d? | 2026-12-09 A | 2026-12-09 A | 43, 38 | 100% | 2026-12-08 | 2026-12-08 | 1d? | Archietect [50%]; Site supervisor [50%]; Generaln= worker | 16h | 16h | 920 | 920 | 920 |
| 45 | 5.4 | install partitions and frames |  | 4d | 2026-12-10 A | 2026-12-15 A | 44 | 100% | 2026-12-09 | 2026-12-14 | 4d | Carpenters [200%]; Generaln= worker; Site supervisor [25%] | 104h | 104h | 3,760 | 3,760 | 3,760 |
| 46 | 5.5 | installing electrical conduits and cabling |  | 4d | 2026-12-13 A | 2026-12-16 A | 45SS+1d | 100% | 2026-12-10 | 2026-12-15 | 4d | Electricians [200%]; Generaln= worker; Site supervisor [25%] | 104h | 104h | 3,760 | 3,760 | 3,760 |
| 47 | 5.6 | installing data cabling and network outlets |  | 3d | 2026-12-14 A | 2026-12-16 A | 46SS+1d | 100% | 2026-12-13 | 2026-12-15 | 3d | Network Technician; IT engineer [25%]; Site supervisor [25%] | 36h | 36h | 2,220 | 2,220 | 2,220 |
| 48 | 5.7 | inspecting electrical and network works before closure |  | 1d? | 2026-12-17 A | 2026-12-17 A | 47, 45, 46 | 100% | 2026-12-16 | 2026-12-16 | 1d? | Electrical Engineer [50%]; IT engineer [50%]; Site supervisor [50%]; Archietect [25%]; Project Manager [25%] | 16h | 16h | 1,620 | 1,620 | 1,620 |
| 49 | 5.8 | closingg partitions and completing ceiling works |  | 3d | 2026-12-20 A | 2026-12-22 A | 48 | 100% | 2026-12-17 | 2026-12-21 | 3d | Carpenters [200%]; Generaln= worker; Site supervisor [25%] | 78h | 78h | 2,820 | 2,820 | 2,820 |
| 50 | 5.9 | painting wall and ceilings |  | 3d | 2026-12-23 A | 2026-12-27 A | 49 | 100% | 2026-12-22 | 2026-12-24 | 3d | Painter [200%]; Generaln= worker; Site supervisor [25%] | 78h | 78h | 2,340 | 2,340 | 2,340 |
| 51 | 5.10 | install flooring |  | 2d | 2026-12-28 A | 2026-12-29 A | 50 | 100% | 2026-12-27 | 2026-12-28 | 2d | Flooring installers [200%]; Generaln= worker; Site supervisor [25%] | 52h | 52h | 1,720 | 1,720 | 1,720 |
| 52 | 5.11 | install lighting and power oulets |  | 2d | 2026-12-28 A | 2026-12-29 A | 50 | 100% | 2026-12-27 | 2026-12-28 | 2d | Electricians [200%]; Site supervisor [25%] | 36h | 36h | 1,560 | 1,560 | 1,560 |
| 53 | 5.12 | install office furniture |  | 2d | 2026-12-30 A | 2026-12-31 A | 39, 51 | 100% | 2026-12-29 | 2026-12-30 | 2d | Furniture installers [200%]; Generaln= worker; Site supervisor [25%] | 52h | 52h | 1,560 | 1,560 | 1,560 |
| 54 | 5.13 | installing computers and peripherals |  | 2d | 2027-01-03 A | 2027-01-04 A | 53, 52 | 100% | 2026-12-31 | 2027-01-03 | 2d | IT engineer [50%]; Network Technician [50%] | 16h | 16h | 1,200 | 1,200 | 1,200 |
| 55 | 5.14 | installing network rquipments |  | 2d | 2026-12-30 A | 2026-12-31 A | 39, 51, 52 | 100% | 2026-12-29 | 2026-12-30 | 2d | IT engineer [50%]; Network Technician [50%] | 16h | 16h | 1,200 | 1,200 | 1,200 |
| 56 | 5.15 | configuration network and user access |  | 2d | 2027-01-05 A | 2027-01-06 A | 55, 54 | 100% | 2027-01-04 | 2027-01-05 | 2d | IT engineer; Network Technician [50%] | 24h | 24h | 2,000 | 2,000 | 2,000 |
| 57 | 5.16 | completing final cleaningg |  | 1d | 2027-01-05 A | 2027-01-05 A | 54, 55 | 100% | 2027-01-04 | 2027-01-04 | 1d | Generaln= worker [200%]; Site supervisor [25%] | 18h | 18h | 460 | 460 | 460 |
| 58 | 5.17 | fitting-out installation complete | milestone | 0d | 2027-01-06 A | 2027-01-06 A | 57, 56 | 100% | 2027-01-05 | 2027-01-05 | 0d |  |  |  |  |  |  |

| ID | WBS | Task | Type | Duration | Start | Finish | Predecessors | Complete | Baseline start | Baseline finish | Baseline duration | Resources | Work | Actual work | Cost | Baseline cost | Actual cost |
| --- | --- | --- | --- | --- | --- | --- | --- | --- | --- | --- | --- | --- | --- | --- | --- | --- | --- |
| 59 | 6 | **Testing and Handover** |  | 10d? | 2027-01-07 A | 2027-01-20 A |  | 100% | 2027-01-06 | 2027-01-19 | 10d? |  | 216h | 216h | 15,060 | 15,060 | 15,060 |
| 60 | 6.1 | test electrical circuits |  | 2d | 2027-01-07 A | 2027-01-10 A | 58 | 100% | 2027-01-06 | 2027-01-07 | 2d | Electrical Engineer [50%]; Electricians; Site supervisor [25%] | 28h | 28h | 1,720 | 1,720 | 1,720 |
| 61 | 6.2 | Test network connectivity and user access |  | 2d | 2027-01-07 A | 2027-01-10 A | 58 | 100% | 2027-01-06 | 2027-01-07 | 2d | IT engineer [50%]; Network Technician [50%] | 16h | 16h | 1,200 | 1,200 | 1,200 |
| 62 | 6.3 | Test computers and installed software |  | 2d | 2027-01-07 A | 2027-01-10 A | 58 | 100% | 2027-01-06 | 2027-01-07 | 2d | IT engineer [50%]; Network Technician [50%] | 16h | 16h | 1,200 | 1,200 | 1,200 |
| 63 | 6.4 | inspect office finishes and furniture |  | 1d? | 2027-01-07 A | 2027-01-07 A | 58 | 100% | 2027-01-06 | 2027-01-06 | 1d? | Archietect [50%]; Site supervisor [50%] | 8h | 8h | 760 | 760 | 760 |
| 64 | 6.5 | conduct client waLKTHROUGH |  | 1d? | 2027-01-11 A | 2027-01-11 A | 63, 60, 61, 62 | 100% | 2027-01-10 | 2027-01-10 | 1d? | Project Manager [50%]; Archietect [25%]; Site supervisor [50%]; IT engineer [25%] | 12h | 12h | 1,320 | 1,320 | 1,320 |
| 65 | 6.6 | preparing defect list and assign corrective actions |  | 1d? | 2027-01-12 A | 2027-01-12 A | 64 | 100% | 2027-01-11 | 2027-01-11 | 1d? | Site supervisor [50%]; Project Planner [50%]; Archietect [25%] | 10h | 10h | 920 | 920 | 920 |
| 66 | 6.7 | correct defects and complete outstanding work |  | 3d | 2027-01-13 A | 2027-01-17 A | 65 | 100% | 2027-01-12 | 2027-01-14 | 3d | Carpenters [50%]; Electricians [50%]; Network Technician [25%]; Painter [50%]; Generaln= worker; Site supervisor [25%] | 72h | 72h | 2,520 | 2,520 | 2,520 |
| 67 | 6.8 | reinspect corrected works |  | 1d? | 2027-01-18 A | 2027-01-18 A | 66 | 100% | 2027-01-17 | 2027-01-17 | 1d? | Archietect [25%]; Electrical Engineer [25%]; IT engineer [25%]; Site supervisor [50%] | 10h | 10h | 920 | 920 | 920 |
| 68 | 6.9 | prepare operating manuals and handover documents |  | 2d | 2027-01-07 A | 2027-01-10 A | 58 | 100% | 2027-01-06 | 2027-01-07 | 2d | Project Planner [50%]; Procurment oficer [25%]; Archietect [25%]; Electrical Engineer [25%] | 20h | 20h | 2,000 | 2,000 | 2,000 |
| 69 | 6.10 | train client staff on office systems |  | 1d? | 2027-01-19 A | 2027-01-19 A | 67 | 100% | 2027-01-18 | 2027-01-18 | 1d? | IT engineer [50%]; Network Technician [25%]; Electrical Engineer [25%] | 8h | 8h | 700 | 700 | 700 |
| 70 | 6.11 | submit final handover documents |  | 1d? | 2027-01-19 A | 2027-01-19 A | 67, 68 | 100% | 2027-01-18 | 2027-01-18 | 1d? | Project Planner [50%]; Project Manager [25%]; Procurment oficer [25%] | 8h | 8h | 860 | 860 | 860 |
| 71 | 6.12 | obtain client acceptance |  | 1d? | 2027-01-20 A | 2027-01-20 A | 70, 69 | 100% | 2027-01-19 | 2027-01-19 | 1d? | Project Manager [50%]; Project Planner [25%]; Site supervisor [25%] | 8h | 8h | 940 | 940 | 940 |
| 72 | 6.13 | office handover | milestone | 0d | 2027-01-20 A | 2027-01-20 A | 71 | 100% | 2027-01-19 | 2027-01-19 | 0d |  |  |  |  |  |  |
| 73 | 7 | **Project closure** |  | 6d? | 2027-01-21 A | 2027-01-28 A |  | 100% | 2027-01-20 | 2027-01-27 | 6d? |  | 62h | 62h | 6,660 | 6,660 | 6,660 |
| 74 | 7.1 | Reviewing final invoices and supplier balance |  | 2d | 2027-01-21 A | 2027-01-24 A | 72 | 100% | 2027-01-20 | 2027-01-21 | 2d | Procurment oficer [50%]; Project Planner [25%]; Project Manager [25%] | 16h | 16h | 1,640 | 1,640 | 1,640 |
| 75 | 7.2 | closing contracts and confirming final payments |  | 1d? | 2027-01-25 A | 2027-01-25 A | 74 | 100% | 2027-01-24 | 2027-01-24 | 1d? | Project Manager [50%]; Procurment oficer [50%] | 8h | 8h | 920 | 920 | 920 |
| 76 | 7.3 | Holding lessons learned meeting |  | 1d? | 2027-01-21 A | 2027-01-21 A | 72 | 100% | 2027-01-20 | 2027-01-20 | 1d? | Project Manager [25%]; Project Planner [25%]; Archietect [25%]; Electrical Engineer [25%]; IT engineer [25%]; Procurment oficer [25%]; Site supervisor [25%] | 14h | 14h | 1,440 | 1,440 | 1,440 |
| 77 | 7.4 | Preparing final project report |  | 2d | 2027-01-26 A | 2027-01-27 A | 76, 75 | 100% | 2027-01-25 | 2027-01-26 | 2d | Project Manager [25%]; Project Planner [75%] | 16h | 16h | 1,800 | 1,800 | 1,800 |
| 78 | 7.5 | Achieve project records and releasing remaining resources |  | 1d? | 2027-01-28 A | 2027-01-28 A | 77 | 100% | 2027-01-27 | 2027-01-27 | 1d? | Project Planner [50%]; Procurment oficer [25%]; Project Manager [25%] | 8h | 8h | 860 | 860 | 860 |
| 79 | 7.6 | Project closure | milestone | 0d | 2027-01-28 A | 2027-01-28 A | 78 | 100% | 2027-01-27 | 2027-01-27 | 0d |  |  |  |  |  |  |
